# LR1

Schedule from MS Project, 2021-03-01 to 2021-09-22, costs in ₽.
Команда разработчиков из 16 человек занимается созданием карты города на основе собственного модуля отображения. Проект должен быть завершен в течение 6 месяцев. Бюджет проекта: 50 000 рублей.

## Calendars

- Standard: Mon-Fri 08:00-12:00, 13:00-17:00; Sat-Sun off. Exceptions (off unless hours are given): 2021-03-08 (8 марта), 2021-05-03 (за 1 мая), 2021-05-10 (за 9 мая), 2021-06-14 (за 12 июня).

## Resources

| Resource | Group | Unit | Rate | Cost per use |
| --- | --- | --- | --- | --- |
| Ведущий программист | Программирование |  | 10 | 100 |
| Программист #1 | Программирование |  | 7 | 50 |
| Программист #2 | Программирование |  | 7 | 50 |
| Программист #3 | Программирование |  | 7 | 50 |
| Программист #4 | Программирование |  | 7 | 50 |
| Системный аналитик | Анализ |  | 20 | 300 |
| Художник-дизайнер | Дизайн |  | 8 | 70 |
| Технический писатель | Документация |  | 5 | 20 |
| Web-дизайнер | Internet |  | 7 | 50 |
| 3D аниматор | Дизайн |  | 8 | 70 |
| Мультимедиа-корреспондент | М-медиа |  | 3 | 20 |
| Наборщик данных #1 | Ввод данных |  | 2 | 10 |
| Наборщик данных #2 | Ввод данных |  | 2 | 10 |
| Наборщик данных #3 | Ввод данных |  | 2 | 10 |
| Наборщик данных #4 | Ввод данных |  | 2 | 10 |
| Наборщик данных #5 | Ввод данных |  | 2 | 10 |
| Аренда сервера |  | hour | 2 |  |

## Schedule

| ID | WBS | Task | Type | Duration | Start | Finish | Predecessors | Total slack | Free slack | Constraint | Resources | Work | Cost |
| --- | --- | --- | --- | --- | --- | --- | --- | --- | --- | --- | --- | --- | --- |
| 1 | 1 | Начало проекта | milestone | 0w | 2021-03-01 08:00 | 2021-03-01 08:00 |  | 71.62d | 0d |  |  |  |  |
| 2 | 2 | **Создание интерфейса** |  | 112.25d | 2021-03-01 08:00 | 2021-08-10 10:00 | 1 | 0d |  |  |  | 560h | 5,550 |
| 3 | 2.1 | **Разработка дизайна интерфейса** |  | 25.62d | 2021-03-01 08:00 | 2021-04-06 14:00 |  | 71.62d | 0d |  |  | 320h | 2,770 |
| 4 | 2.1.1 | Разработка 2D графических элементов |  | 3w | 2021-03-01 08:00 | 2021-03-23 11:00 |  | 71.62d | 0d |  | Художник-дизайнер | 120h | 1,030 |
| 5 | 2.1.2 | Разработка 3D графических элементов |  | 2w | 2021-03-01 08:00 | 2021-03-16 10:00 | 4SS | 71.62d | 0d |  | 3D аниматор | 80h | 710 |
| 6 | 2.1.3 | Создание заставки |  | 3w | 2021-03-16 10:00 | 2021-04-06 14:00 | 5 | 71.62d |  |  | 3D аниматор | 120h | 1,030 |
| 7 | 2.2 | Программирование интерфейса |  | 3w | 2021-07-20 10:00 | 2021-08-10 10:00 | 3, 12 | 0d |  |  | Программист #4; Программист #3 | 240h | 1,780 |
| 8 | 3 | **Построение базы объектов** |  | 85.25d | 2021-03-23 11:00 | 2021-07-23 14:00 |  | 42.75d |  |  | Аренда сервера [1 /hour] | 5651h | 15,392 |
| 9 | 3.1 | Анализ и построение структуры базы объектов |  | 2w | 2021-03-23 11:00 | 2021-04-06 14:00 |  | 42.75d | 0d |  | Системный аналитик | 80h | 1,900 |
| 10 | 3.2 | Программирование средств обработки базы объектов |  | 3w | 2021-04-06 14:00 | 2021-04-27 14:00 | 9 | 42.75d | 0d |  | Программист #4; Программист #3 | 240h | 1,780 |
| 11 | 3.3 | Наполнение базы объектов |  | 12w | 2021-04-27 14:00 | 2021-07-23 14:00 | 10 | 42.75d |  |  | Наборщик данных #1; Наборщик данных #2; Наборщик данных #3; Наборщик данных #4; Наборщик данных #5 | 2400h | 4,850 |
| 12 | 4 | **Создание ядра GIS** |  | 97.25d | 2021-03-01 08:00 | 2021-07-20 10:00 |  | 0d |  |  |  | 1880h | 18,680 |
| 13 | 4.1 | Анализ и проектирование ядра |  | 3w | 2021-03-01 08:00 | 2021-03-23 11:00 |  | 0d |  |  | Ведущий программист; Системный аналитик | 240h | 4,000 |
| 14 | 4.2 | Создание модели ядра |  | 5.12w | 2021-03-23 11:00 | 2021-04-27 17:00 | 13 | 0d |  |  | Программист #1; Ведущий программист | 400h | 3,550 |
| 15 | 4.3 | Тестирование модели ядра |  | 1w | 2021-04-28 08:00 | 2021-05-05 17:00 | 14 | 0d |  |  | Программист #1 | 40h | 330 |
| 16 | 4.4 | Создание рабочей версии ядра |  | 10.25w | 2021-05-06 08:00 | 2021-07-20 10:00 | 15 | 0d |  |  | Программист #1; Ведущий программист; Программист #2 | 1200h | 9,800 |
| 17 | 5 | Создание мультимедиа – наполнения |  | 6w | 2021-04-06 14:00 | 2021-05-21 12:00 | 3 | 86.88d |  |  | Мультимедиа-корреспондент | 240h | 740 |
| 18 | 6 | Создание справочной системы |  | 2w | 2021-08-19 14:00 | 2021-09-02 16:00 | 7 | 13.5d |  |  | Технический писатель | 80h | 420 |
| 19 | 7 | **Создание руководства пользователя** |  | 17.38d | 2021-07-27 10:00 | 2021-08-19 14:00 | 7FS-10d | 0d |  |  |  | 160h | 1,010 |
| 20 | 7.1 | Разработка дизайна руководства |  | 1w | 2021-07-27 10:00 | 2021-08-03 11:00 |  | 0d |  | start no earlier than 2021-07-22 09:00 | Художник-дизайнер | 40h | 390 |
| 21 | 7.2 | Написание руководства пользователя |  | 3w | 2021-07-29 10:00 | 2021-08-19 14:00 | 20SS+2d | 0d |  |  | Технический писатель | 120h | 620 |
| 22 | 8 | **Создание web – сайта и поддержка** |  | 23.62d | 2021-07-29 10:00 | 2021-08-31 16:00 |  | 0d |  |  |  | 248h | 2,106 |
| 23 | 8.1 | Разработка структуры сайта |  | 1d | 2021-07-29 10:00 | 2021-07-30 10:00 | 21SS | 0d |  |  | Web-дизайнер | 8h | 106 |
| 24 | 8.2 | Разработка дизайна сайта |  | 1.43w | 2021-07-30 10:00 | 2021-08-10 12:00 | 23 | 0d |  |  | Web-дизайнер; Художник-дизайнер; 3D аниматор | 120h | 1,110 |
| 25 | 8.3 | Наполнение сайта |  | 3w | 2021-08-10 13:00 | 2021-08-31 16:00 | 24 | 0d |  |  | Web-дизайнер | 120h | 890 |
| 26 | 9 | Тестирование сайта |  | 4.1w | 2021-08-24 16:00 | 2021-09-22 11:00 | 22FS-1w | 0d |  |  | Ведущий программист; Программист #1; Программист #2 | 480h | 4,040 |
| 27 | 10 | Сдача сайта в эксплуатацию | milestone | 0w | 2021-09-22 11:00 | 2021-09-22 11:00 | 26 | 0d |  |  |  |  |  |

| ID | WBS | Task | Duration | Start | Finish | Total slack | Free slack | Constraint | Resources | Work | Cost |
| --- | --- | --- | --- | --- | --- | --- | --- | --- | --- | --- | --- |
| 28 | 11 | **Совещание** | 136.12d | 2021-03-03 08:00 | 2021-09-15 09:00 | 5.25d |  |  |  | 203h | 1,769 |
| 29 | 11.1 | Совещание 1 | 1h | 2021-03-03 08:00 | 2021-03-03 09:00 | 141.25d |  | start no earlier than 2021-03-03 08:00 | 3D аниматор; Web-дизайнер; Ведущий программист; Мультимедиа-корреспондент; Системный аналитик; Художник-дизайнер; Технический писатель | 7h | 61 |
| 30 | 11.2 | Совещание 2 | 1h | 2021-03-10 08:00 | 2021-03-10 09:00 | 137.25d | 132d | start no earlier than 2021-03-10 08:00 | 3D аниматор; Web-дизайнер; Ведущий программист; Мультимедиа-корреспондент; Системный аналитик; Художник-дизайнер; Технический писатель | 7h | 61 |
| 31 | 11.3 | Совещание 3 | 1h | 2021-03-17 08:00 | 2021-03-17 09:00 | 132.25d | 127d | start no earlier than 2021-03-17 08:00 | 3D аниматор; Web-дизайнер; Ведущий программист; Мультимедиа-корреспондент; Системный аналитик; Художник-дизайнер; Технический писатель | 7h | 61 |
| 32 | 11.4 | Совещание 4 | 1h | 2021-03-24 08:00 | 2021-03-24 09:00 | 127.25d | 122d | start no earlier than 2021-03-24 08:00 | 3D аниматор; Web-дизайнер; Ведущий программист; Мультимедиа-корреспондент; Системный аналитик; Художник-дизайнер; Технический писатель | 7h | 61 |
| 33 | 11.5 | Совещание 5 | 1h | 2021-03-31 08:00 | 2021-03-31 09:00 | 122.25d | 117d | start no earlier than 2021-03-31 08:00 | 3D аниматор; Web-дизайнер; Ведущий программист; Мультимедиа-корреспондент; Системный аналитик; Художник-дизайнер; Технический писатель | 7h | 61 |
| 34 | 11.6 | Совещание 6 | 1h | 2021-04-07 08:00 | 2021-04-07 09:00 | 117.25d | 112d | start no earlier than 2021-04-07 08:00 | 3D аниматор; Web-дизайнер; Ведущий программист; Мультимедиа-корреспондент; Системный аналитик; Художник-дизайнер; Технический писатель | 7h | 61 |
| 35 | 11.7 | Совещание 7 | 1h | 2021-04-14 08:00 | 2021-04-14 09:00 | 112.25d | 107d | start no earlier than 2021-04-14 08:00 | 3D аниматор; Web-дизайнер; Ведущий программист; Мультимедиа-корреспондент; Системный аналитик; Художник-дизайнер; Технический писатель | 7h | 61 |
| 36 | 11.8 | Совещание 8 | 1h | 2021-04-21 08:00 | 2021-04-21 09:00 | 107.25d | 102d | start no earlier than 2021-04-21 08:00 | 3D аниматор; Web-дизайнер; Ведущий программист; Мультимедиа-корреспондент; Системный аналитик; Художник-дизайнер; Технический писатель | 7h | 61 |
| 37 | 11.9 | Совещание 9 | 1h | 2021-04-28 08:00 | 2021-04-28 09:00 | 102.25d | 97d | start no earlier than 2021-04-28 08:00 | 3D аниматор; Web-дизайнер; Ведущий программист; Мультимедиа-корреспондент; Системный аналитик; Художник-дизайнер; Технический писатель | 7h | 61 |
| 38 | 11.10 | Совещание 10 | 1h | 2021-05-05 08:00 | 2021-05-05 09:00 | 98.25d | 93d | start no earlier than 2021-05-05 08:00 | 3D аниматор; Web-дизайнер; Ведущий программист; Мультимедиа-корреспондент; Системный аналитик; Художник-дизайнер; Технический писатель | 7h | 61 |
| 39 | 11.11 | Совещание 11 | 1h | 2021-05-12 08:00 | 2021-05-12 09:00 | 94.25d | 89d | start no earlier than 2021-05-12 08:00 | 3D аниматор; Web-дизайнер; Ведущий программист; Мультимедиа-корреспондент; Системный аналитик; Художник-дизайнер; Технический писатель | 7h | 61 |
| 40 | 11.12 | Совещание 12 | 1h | 2021-05-19 08:00 | 2021-05-19 09:00 | 89.25d | 84d | start no earlier than 2021-05-19 08:00 | 3D аниматор; Web-дизайнер; Ведущий программист; Мультимедиа-корреспондент; Системный аналитик; Художник-дизайнер; Технический писатель | 7h | 61 |
| 41 | 11.13 | Совещание 13 | 1h | 2021-05-26 08:00 | 2021-05-26 09:00 | 84.25d | 79d | start no earlier than 2021-05-26 08:00 | 3D аниматор; Web-дизайнер; Ведущий программист; Мультимедиа-корреспондент; Системный аналитик; Художник-дизайнер; Технический писатель | 7h | 61 |
| 42 | 11.14 | Совещание 14 | 1h | 2021-06-02 08:00 | 2021-06-02 09:00 | 79.25d | 74d | start no earlier than 2021-06-02 08:00 | 3D аниматор; Web-дизайнер; Ведущий программист; Мультимедиа-корреспондент; Системный аналитик; Художник-дизайнер; Технический писатель | 7h | 61 |
| 43 | 11.15 | Совещание 15 | 1h | 2021-06-09 08:00 | 2021-06-09 09:00 | 74.25d | 69d | start no earlier than 2021-06-09 08:00 | 3D аниматор; Web-дизайнер; Ведущий программист; Мультимедиа-корреспондент; Системный аналитик; Художник-дизайнер; Технический писатель | 7h | 61 |
| 44 | 11.16 | Совещание 16 | 1h | 2021-06-16 08:00 | 2021-06-16 09:00 | 70.25d | 65d | start no earlier than 2021-06-16 08:00 | 3D аниматор; Web-дизайнер; Ведущий программист; Мультимедиа-корреспондент; Системный аналитик; Художник-дизайнер; Технический писатель | 7h | 61 |
| 45 | 11.17 | Совещание 17 | 1h | 2021-06-23 08:00 | 2021-06-23 09:00 | 65.25d | 60d | start no earlier than 2021-06-23 08:00 | 3D аниматор; Web-дизайнер; Ведущий программист; Мультимедиа-корреспондент; Системный аналитик; Художник-дизайнер; Технический писатель | 7h | 61 |
| 46 | 11.18 | Совещание 18 | 1h | 2021-06-30 08:00 | 2021-06-30 09:00 | 60.25d | 55d | start no earlier than 2021-06-30 08:00 | 3D аниматор; Web-дизайнер; Ведущий программист; Мультимедиа-корреспондент; Системный аналитик; Художник-дизайнер; Технический писатель | 7h | 61 |
| 47 | 11.19 | Совещание 19 | 1h | 2021-07-07 08:00 | 2021-07-07 09:00 | 55.25d | 50d | start no earlier than 2021-07-07 08:00 | 3D аниматор; Web-дизайнер; Ведущий программист; Мультимедиа-корреспондент; Системный аналитик; Художник-дизайнер; Технический писатель | 7h | 61 |
| 48 | 11.20 | Совещание 20 | 1h | 2021-07-14 08:00 | 2021-07-14 09:00 | 50.25d | 45d | start no earlier than 2021-07-14 08:00 | 3D аниматор; Web-дизайнер; Ведущий программист; Мультимедиа-корреспондент; Системный аналитик; Художник-дизайнер; Технический писатель | 7h | 61 |
| 49 | 11.21 | Совещание 21 | 1h | 2021-07-21 08:00 | 2021-07-21 09:00 | 45.25d | 40d | start no earlier than 2021-07-21 08:00 | 3D аниматор; Web-дизайнер; Ведущий программист; Мультимедиа-корреспондент; Системный аналитик; Художник-дизайнер; Технический писатель | 7h | 61 |
| 50 | 11.22 | Совещание 22 | 1h | 2021-07-28 08:00 | 2021-07-28 09:00 | 40.25d | 35d | start no earlier than 2021-07-28 08:00 | 3D аниматор; Web-дизайнер; Ведущий программист; Мультимедиа-корреспондент; Системный аналитик; Художник-дизайнер; Технический писатель | 7h | 61 |
| 51 | 11.23 | Совещание 23 | 1h | 2021-08-04 08:00 | 2021-08-04 09:00 | 35.25d | 30d | start no earlier than 2021-08-04 08:00 | 3D аниматор; Web-дизайнер; Ведущий программист; Мультимедиа-корреспондент; Системный аналитик; Художник-дизайнер; Технический писатель | 7h | 61 |
| 52 | 11.24 | Совещание 24 | 1h | 2021-08-11 08:00 | 2021-08-11 09:00 | 30.25d | 25d | start no earlier than 2021-08-11 08:00 | 3D аниматор; Web-дизайнер; Ведущий программист; Мультимедиа-корреспондент; Системный аналитик; Художник-дизайнер; Технический писатель | 7h | 61 |
| 53 | 11.25 | Совещание 25 | 1h | 2021-08-18 08:00 | 2021-08-18 09:00 | 25.25d | 20d | start no earlier than 2021-08-18 08:00 | 3D аниматор; Web-дизайнер; Ведущий программист; Мультимедиа-корреспондент; Системный аналитик; Художник-дизайнер; Технический писатель | 7h | 61 |
| 54 | 11.26 | Совещание 26 | 1h | 2021-08-25 08:00 | 2021-08-25 09:00 | 20.25d | 15d | start no earlier than 2021-08-25 08:00 | 3D аниматор; Web-дизайнер; Ведущий программист; Мультимедиа-корреспондент; Системный аналитик; Художник-дизайнер; Технический писатель | 7h | 61 |
| 55 | 11.27 | Совещание 27 | 1h | 2021-09-01 08:00 | 2021-09-01 09:00 | 15.25d | 10d | start no earlier than 2021-09-01 08:00 | 3D аниматор; Web-дизайнер; Ведущий программист; Мультимедиа-корреспондент; Системный аналитик; Художник-дизайнер; Технический писатель | 7h | 61 |
| 56 | 11.28 | Совещание 28 | 1h | 2021-09-08 08:00 | 2021-09-08 09:00 | 10.25d | 5d | start no earlier than 2021-09-08 08:00 | 3D аниматор; Web-дизайнер; Ведущий программист; Мультимедиа-корреспондент; Системный аналитик; Художник-дизайнер; Технический писатель | 7h | 61 |
| 57 | 11.29 | Совещание 29 | 1h | 2021-09-15 08:00 | 2021-09-15 09:00 | 5.25d | 0d | start no earlier than 2021-09-15 08:00 | 3D аниматор; Web-дизайнер; Ведущий программист; Мультимедиа-корреспондент; Системный аналитик; Художник-дизайнер; Технический писатель | 7h | 61 |
