# LR1

Schedule from MS Project, 2021-03-01 to 2021-08-09, status date 2021-05-05, costs in ₽, A marks actual dates.
Команда разработчиков из 16 человек занимается созданием карты города на основе собственного модуля отображения. Проект должен быть завершен в течение 6 месяцев. Бюджет проекта: 50 000 рублей.

## Calendars

- Standard: Mon-Fri 08:00-12:00, 13:00-17:00; Sat-Sun off. Exceptions (off unless hours are given): 2021-03-08 (8 марта), 2021-05-03 (за 1 мая), 2021-05-10 (за 9 мая), 2021-06-14 (за 12 июня).

## Resources

| Resource | Group | Unit | Rate | Cost per use |
| --- | --- | --- | --- | --- |
| Ведущий программист | Программирование |  | 10 | 100 |
| Программист #1 | Программирование |  | 7 | 50 |
| Программист #2 | Программирование |  | 7 | 50 |
| Программист #3 | Программирование |  | 7 | 50 |
| Программист #4 | Программирование |  | 7 | 50 |
| Системный аналитик | Анализ |  | 20 | 300 |
| Художник-дизайнер | Дизайн |  | 8 | 70 |
| Технический писатель | Документация |  | 5 | 20 |
| Web-дизайнер | Internet |  | 7 | 50 |
| 3D аниматор | Дизайн |  | 8 | 70 |
| Мультимедиа-корреспондент | М-медиа |  | 3 | 20 |
| Наборщик данных #1 | Ввод данных |  | 2 | 10 |
| Наборщик данных #2 | Ввод данных |  | 2 | 10 |
| Наборщик данных #3 | Ввод данных |  | 2 | 10 |
| Наборщик данных #4 | Ввод данных |  | 2 | 10 |
| Наборщик данных #5 | Ввод данных |  | 2 | 10 |
| Аренда сервера |  | hour | 2 |  |
| Наборщик данных #6 | Ввод данных |  | 2 | 10 |
| Наборщик данных #7 | Ввод данных |  | 2 | 10 |
| Наборщик данных #8 | Ввод данных |  | 2 | 10 |
| Наборщик данных #9 | Ввод данных |  | 2 | 10 |
| Наборщик данных #10 | Ввод данных |  | 2 | 10 |

## Schedule

| ID | WBS | Task | Type | Duration | Start | Finish | Predecessors | Complete | Remaining | Baseline start | Baseline finish | Baseline duration | Total slack | Resources | Work | Actual work | Cost | Baseline cost | Actual cost |
| --- | --- | --- | --- | --- | --- | --- | --- | --- | --- | --- | --- | --- | --- | --- | --- | --- | --- | --- | --- |
| 1 | 1 | Начало проекта | milestone | 0w | 2021-03-01 08:00 A | 2021-03-01 08:00 A |  | 100% |  | 2021-03-01 08:00 | 2021-03-01 08:00 | 0w |  |  |  |  |  |  |  |
| 2 | 2 | **Создание интерфейса** |  | 85.6d | 2021-03-01 08:00 A | 2021-07-02 13:48 | 1 | 81% | 16.04d | 2021-03-01 08:00 | 2021-06-24 08:31 | 79.07d | 0d |  | 560h | 320h | 5,875.27 | 5,650 | 3,743.27 |
| 3 | 2.1 | **Разработка дизайна интерфейса** |  | 29d | 2021-03-01 08:00 A | 2021-04-09 17:00 A |  | 100% |  | 2021-03-01 08:00 | 2021-04-06 14:00 | 25.62d |  |  | 320h | 320h | 2,933.27 | 2,770 | 2,933.27 |
| 4 | 2.1.1 | Разработка 2D графических элементов |  | 3w | 2021-03-01 08:00 A | 2021-03-23 11:00 A |  | 100% |  | 2021-03-01 08:00 | 2021-03-23 11:00 | 3w |  | Художник-дизайнер | 120h | 120h | 1,030 | 1,030 | 1,030 |
| 5 | 2.1.2 | Разработка 3D графических элементов |  | 2w | 2021-03-01 08:00 A | 2021-03-16 10:00 A | 4SS | 100% |  | 2021-03-01 08:00 | 2021-03-16 10:00 | 2w |  | 3D аниматор | 80h | 80h | 710 | 710 | 710 |
| 6 | 2.1.3 | Создание заставки |  | 3.67w | 2021-03-16 10:00 A | 2021-04-09 17:00 A | 5 | 100% |  | 2021-03-16 10:00 | 2021-04-06 14:00 | 3w |  | 3D аниматор | 120h | 120h | 1,193.27 | 1,030 | 1,193.27 |
| 7 | 2.2 | Программирование интерфейса |  | 2w | 2021-06-21 14:48 | 2021-07-02 13:48 | 3, 12 |  |  | 2021-06-11 13:31 | 2021-06-24 08:31 | 1.5w | 0d | Программист #4; Программист #3; Программист #1 | 240h |  | 1,942 | 1,880 |  |
| 8 | 3 | **Построение базы объектов** |  | 56.7d | 2021-03-23 15:15 A | 2021-06-15 11:49 |  | 40% | 34.02d | 2021-03-23 11:00 | 2021-06-10 14:00 | 55.25d | 38.78d | Аренда сервера [1 /hour] | 4732.56h | 1077.02h | 13,929.4 | 13,378 | 5,623.97 |
| 9 | 3.1 | Анализ и построение структуры базы объектов |  | 2w | 2021-03-23 15:15 A | 2021-04-12 08:49 A |  | 100% |  | 2021-03-23 11:00 | 2021-04-06 14:00 | 2w |  | Системный аналитик | 80h | 80h | 1,900 | 1,900 | 1,900 |
| 10 | 3.2 | Программирование средств обработки базы объектов |  | 3w | 2021-04-12 08:49 A | 2021-04-29 11:49 | 9 | 80% | 0.6w | 2021-04-06 14:00 | 2021-04-27 14:00 | 3w | 0d | Программист #4; Программист #3 | 240h | 192h | 1,948 | 1,780 | 1,578.4 |
| 11 | 3.3 | Наполнение базы объектов |  | 6w | 2021-04-29 11:49 A | 2021-06-15 11:49 | 10 |  | 6w | 2021-04-27 14:00 | 2021-06-10 14:00 | 6w | 38.78d | Наборщик данных #1; Наборщик данных #2; Наборщик данных #3; Наборщик данных #4; Наборщик данных #5; Наборщик данных #6; Наборщик данных #7; Наборщик данных #8; Наборщик данных #9; Наборщик данных #10 | 2400h |  | 4,900 | 4,900 | 100 |
| 12 | 4 | **Создание ядра GIS** |  | 76.73d | 2021-03-01 08:00 A | 2021-06-21 14:48 |  | 39% | 46.76d | 2021-03-01 08:00 | 2021-06-11 13:31 | 71.57d | 0d |  | 1880h | 680h | 18,661.74 | 18,072.82 | 8,242.64 |
| 13 | 4.1 | Анализ и проектирование ядра |  | 3.04w | 2021-03-01 08:00 A | 2021-03-23 13:36 A |  | 100% |  | 2021-03-01 08:00 | 2021-03-23 11:00 | 3w |  | Ведущий программист; Системный аналитик | 240h | 240h | 4,000 | 4,000 | 4,000 |
| 14 | 4.2 | Создание модели ядра |  | 2.17w | 2021-03-23 13:36 A | 2021-04-07 09:31 A | 13 | 100% |  | 2021-03-23 11:00 | 2021-04-06 13:02 | 2.03w |  | Программист #1; Ведущий программист; Программист #2; Программист #3; Программист #4 | 400h | 400h | 3,372.64 | 3,335.97 | 3,372.64 |
| 15 | 4.3 | Тестирование модели ядра |  | 1.2w | 2021-04-07 09:31 A | 2021-04-15 09:31 A | 14 | 100% |  | 2021-04-06 13:02 | 2021-04-13 13:02 | 1w |  | Программист #1 | 40h | 40h | 330 | 330 | 330 |
| 16 | 4.4 | Создание рабочей версии ядра |  | 10.01w | 2021-04-15 08:27 A | 2021-06-21 14:48 | 15 |  | 10.01w | 2021-04-13 13:02 | 2021-06-11 13:31 | 8.21w | 0d | Программист #1; Ведущий программист; Программист #3; Программист #4 | 1200h |  | 9,959.1 | 9,406.86 | 150 |
| 17 | 5 | Создание мультимедиа – наполнения |  | 6w | 2021-04-12 08:00 A | 2021-05-26 15:00 | 3 |  | 6w | 2021-04-06 14:00 | 2021-05-21 12:00 | 6w | 51.51d | Мультимедиа-корреспондент | 240h |  | 740 | 740 | 20 |
| 18 | 6 | Создание справочной системы |  | 2w | 2021-07-13 16:48 | 2021-07-28 09:48 | 7 |  |  | 2021-07-06 09:31 | 2021-07-22 11:31 | 2w | 8.03d | Технический писатель | 80h |  | 420 | 420 |  |
| 19 | 7 | **Создание руководства пользователя** |  | 17.38d | 2021-06-18 13:48 | 2021-07-13 16:48 | 7FS-10d |  |  | 2021-06-09 08:31 | 2021-07-06 09:31 | 18.12d | 0d |  | 160h |  | 1,010 | 1,010 |  |
| 20 | 7.1 | Разработка дизайна руководства |  | 1w | 2021-06-18 13:48 | 2021-06-25 14:48 |  |  |  | 2021-06-09 08:31 | 2021-06-17 11:31 | 1w | 0d | Художник-дизайнер | 40h |  | 390 | 390 |  |
| 21 | 7.2 | Написание руководства пользователя |  | 3w | 2021-06-22 13:48 | 2021-07-13 16:48 | 20SS+2d |  |  | 2021-06-11 08:31 | 2021-07-06 09:31 | 3w | 0d | Технический писатель | 120h |  | 620 | 620 |  |
| 22 | 8 | **Создание web – сайта и поддержка** |  | 23.62d | 2021-06-22 13:48 | 2021-07-26 09:48 |  |  |  | 2021-06-11 08:31 | 2021-07-16 16:31 | 24.88d | 0d |  | 248h |  | 2,170 | 2,106 |  |
| 23 | 8.1 | Разработка структуры сайта |  | 1d | 2021-06-22 13:48 | 2021-06-23 14:48 | 21SS |  |  | 2021-06-11 08:31 | 2021-06-15 08:31 | 1d | 0d | Web-дизайнер | 8h |  | 106 | 106 |  |
| 24 | 8.2 | Разработка дизайна сайта |  | 1.43w | 2021-06-23 14:48 | 2021-07-02 15:48 | 23 |  |  | 2021-06-15 08:31 | 2021-06-24 15:31 | 1.5w | 0d | Web-дизайнер; Художник-дизайнер; 3D аниматор | 120h |  | 1,174 | 1,110 |  |
| 25 | 8.3 | Наполнение сайта |  | 3w | 2021-07-02 15:48 | 2021-07-26 09:48 | 24 |  |  | 2021-06-24 15:31 | 2021-07-16 16:31 | 3w | 0d | Web-дизайнер | 120h |  | 890 | 890 |  |
| 26 | 9 | Тестирование сайта |  | 3.33w | 2021-07-19 09:48 | 2021-08-09 10:05 | 22FS-1w |  |  | 2021-07-09 16:31 | 2021-07-28 14:24 | 2.55w | 0d | Ведущий программист; Программист #1; Программист #3; Программист #4 | 480h |  | 4,135.24 | 3,944.68 |  |
| 27 | 10 | Сдача сайта в эксплуатацию | milestone | 0w | 2021-08-09 10:05 | 2021-08-09 10:05 | 26 |  |  | 2021-07-28 14:24 | 2021-07-28 14:24 | 0w | 0d |  |  |  |  |  |  |

| ID | WBS | Task | Duration | Start | Finish | Complete | Remaining | Baseline start | Baseline finish | Baseline duration | Total slack | Constraint | Resources | Work | Actual work | Cost | Baseline cost | Actual cost |
| --- | --- | --- | --- | --- | --- | --- | --- | --- | --- | --- | --- | --- | --- | --- | --- | --- | --- | --- |
| 28 | 11 | **Совещание** | 106.12d | 2021-03-03 08:00 A | 2021-08-04 09:00 | 43% | 59.98d | 2021-03-03 08:00 | 2021-07-28 09:00 | 101.12d | 3.14d |  |  | 154h | 70h | 1,342 | 1,342 | 610 |
| 29 | 11.1 | Совещание 1 | 1h | 2021-03-03 08:00 A | 2021-03-03 09:00 A | 100% |  | 2021-03-03 08:00 | 2021-03-03 09:00 | 1h |  | start no earlier than 2021-03-03 08:00 | 3D аниматор; Web-дизайнер; Ведущий программист; Мультимедиа-корреспондент; Системный аналитик; Художник-дизайнер; Технический писатель | 7h | 7h | 61 | 61 | 61 |
| 30 | 11.2 | Совещание 2 | 1h | 2021-03-10 08:00 A | 2021-03-10 09:00 A | 100% |  | 2021-03-10 08:00 | 2021-03-10 09:00 | 1h |  | start no earlier than 2021-03-10 08:00 | 3D аниматор; Web-дизайнер; Ведущий программист; Мультимедиа-корреспондент; Системный аналитик; Художник-дизайнер; Технический писатель | 7h | 7h | 61 | 61 | 61 |
| 31 | 11.3 | Совещание 3 | 1h | 2021-03-17 08:00 A | 2021-03-17 09:00 A | 100% |  | 2021-03-17 08:00 | 2021-03-17 09:00 | 1h |  | start no earlier than 2021-03-17 08:00 | 3D аниматор; Web-дизайнер; Ведущий программист; Мультимедиа-корреспондент; Системный аналитик; Художник-дизайнер; Технический писатель | 7h | 7h | 61 | 61 | 61 |
| 32 | 11.4 | Совещание 4 | 1h | 2021-03-24 08:00 A | 2021-03-24 09:00 A | 100% |  | 2021-03-24 08:00 | 2021-03-24 09:00 | 1h |  | start no earlier than 2021-03-24 08:00 | 3D аниматор; Web-дизайнер; Ведущий программист; Мультимедиа-корреспондент; Системный аналитик; Художник-дизайнер; Технический писатель | 7h | 7h | 61 | 61 | 61 |
| 33 | 11.5 | Совещание 5 | 1h | 2021-03-31 08:00 A | 2021-03-31 09:00 A | 100% |  | 2021-03-31 08:00 | 2021-03-31 09:00 | 1h |  | start no earlier than 2021-03-31 08:00 | 3D аниматор; Web-дизайнер; Ведущий программист; Мультимедиа-корреспондент; Системный аналитик; Художник-дизайнер; Технический писатель | 7h | 7h | 61 | 61 | 61 |
| 34 | 11.6 | Совещание 6 | 1h | 2021-04-07 08:00 A | 2021-04-07 09:00 A | 100% |  | 2021-04-07 08:00 | 2021-04-07 09:00 | 1h |  | start no earlier than 2021-04-07 08:00 | 3D аниматор; Web-дизайнер; Ведущий программист; Мультимедиа-корреспондент; Системный аналитик; Художник-дизайнер; Технический писатель | 7h | 7h | 61 | 61 | 61 |
| 35 | 11.7 | Совещание 7 | 1h | 2021-04-14 08:00 A | 2021-04-14 09:00 A | 100% |  | 2021-04-14 08:00 | 2021-04-14 09:00 | 1h |  | start no earlier than 2021-04-14 08:00 | 3D аниматор; Web-дизайнер; Ведущий программист; Мультимедиа-корреспондент; Системный аналитик; Художник-дизайнер; Технический писатель | 7h | 7h | 61 | 61 | 61 |
| 36 | 11.8 | Совещание 8 | 1h | 2021-04-21 08:00 A | 2021-04-21 09:00 A | 100% |  | 2021-04-21 08:00 | 2021-04-21 09:00 | 1h |  | start no earlier than 2021-04-21 08:00 | 3D аниматор; Web-дизайнер; Ведущий программист; Мультимедиа-корреспондент; Системный аналитик; Художник-дизайнер; Технический писатель | 7h | 7h | 61 | 61 | 61 |
| 37 | 11.9 | Совещание 9 | 1h | 2021-04-28 08:00 A | 2021-04-28 09:00 A | 100% |  | 2021-04-28 08:00 | 2021-04-28 09:00 | 1h |  | start no earlier than 2021-04-28 08:00 | 3D аниматор; Web-дизайнер; Ведущий программист; Мультимедиа-корреспондент; Системный аналитик; Художник-дизайнер; Технический писатель | 7h | 7h | 61 | 61 | 61 |
| 38 | 11.10 | Совещание 10 | 1h | 2021-05-05 08:00 A | 2021-05-05 09:00 A | 100% |  | 2021-05-05 08:00 | 2021-05-05 09:00 | 1h |  | start no earlier than 2021-05-05 08:00 | 3D аниматор; Web-дизайнер; Ведущий программист; Мультимедиа-корреспондент; Системный аналитик; Художник-дизайнер; Технический писатель | 7h | 7h | 61 | 61 | 61 |
| 39 | 11.11 | Совещание 11 | 1h | 2021-05-12 08:00 | 2021-05-12 09:00 |  |  | 2021-05-12 08:00 | 2021-05-12 09:00 | 1h | 62.14d | start no earlier than 2021-05-12 08:00 | 3D аниматор; Web-дизайнер; Ведущий программист; Мультимедиа-корреспондент; Системный аналитик; Художник-дизайнер; Технический писатель | 7h |  | 61 | 61 |  |
| 40 | 11.12 | Совещание 12 | 1h | 2021-05-19 08:00 | 2021-05-19 09:00 |  |  | 2021-05-19 08:00 | 2021-05-19 09:00 | 1h | 57.14d | start no earlier than 2021-05-19 08:00 | 3D аниматор; Web-дизайнер; Ведущий программист; Мультимедиа-корреспондент; Системный аналитик; Художник-дизайнер; Технический писатель | 7h |  | 61 | 61 |  |
| 41 | 11.13 | Совещание 13 | 1h | 2021-05-26 08:00 | 2021-05-26 09:00 |  |  | 2021-05-26 08:00 | 2021-05-26 09:00 | 1h | 52.14d | start no earlier than 2021-05-26 08:00 | 3D аниматор; Web-дизайнер; Ведущий программист; Мультимедиа-корреспондент; Системный аналитик; Художник-дизайнер; Технический писатель | 7h |  | 61 | 61 |  |
| 42 | 11.14 | Совещание 14 | 1h | 2021-06-02 08:00 | 2021-06-02 09:00 |  |  | 2021-06-02 08:00 | 2021-06-02 09:00 | 1h | 47.14d | start no earlier than 2021-06-02 08:00 | 3D аниматор; Web-дизайнер; Ведущий программист; Мультимедиа-корреспондент; Системный аналитик; Художник-дизайнер; Технический писатель | 7h |  | 61 | 61 |  |
| 43 | 11.15 | Совещание 15 | 1h | 2021-06-09 08:00 | 2021-06-09 09:00 |  |  | 2021-06-09 08:00 | 2021-06-09 09:00 | 1h | 42.14d | start no earlier than 2021-06-09 08:00 | 3D аниматор; Web-дизайнер; Ведущий программист; Мультимедиа-корреспондент; Системный аналитик; Художник-дизайнер; Технический писатель | 7h |  | 61 | 61 |  |
| 44 | 11.16 | Совещание 16 | 1h | 2021-06-16 08:00 | 2021-06-16 09:00 |  |  | 2021-06-16 08:00 | 2021-06-16 09:00 | 1h | 38.14d | start no earlier than 2021-06-16 08:00 | 3D аниматор; Web-дизайнер; Ведущий программист; Мультимедиа-корреспондент; Системный аналитик; Художник-дизайнер; Технический писатель | 7h |  | 61 | 61 |  |
| 45 | 11.17 | Совещание 17 | 1h | 2021-06-23 08:00 | 2021-06-23 09:00 |  |  | 2021-06-23 08:00 | 2021-06-23 09:00 | 1h | 33.14d | start no earlier than 2021-06-23 08:00 | 3D аниматор; Web-дизайнер; Ведущий программист; Мультимедиа-корреспондент; Системный аналитик; Художник-дизайнер; Технический писатель | 7h |  | 61 | 61 |  |
| 46 | 11.18 | Совещание 18 | 1h | 2021-06-30 08:00 | 2021-06-30 09:00 |  |  | 2021-06-30 08:00 | 2021-06-30 09:00 | 1h | 28.14d | start no earlier than 2021-06-30 08:00 | 3D аниматор; Web-дизайнер; Ведущий программист; Мультимедиа-корреспондент; Системный аналитик; Художник-дизайнер; Технический писатель | 7h |  | 61 | 61 |  |
| 47 | 11.19 | Совещание 19 | 1h | 2021-07-07 08:00 | 2021-07-07 09:00 |  |  | 2021-07-07 08:00 | 2021-07-07 09:00 | 1h | 23.14d | start no earlier than 2021-07-07 08:00 | 3D аниматор; Web-дизайнер; Ведущий программист; Мультимедиа-корреспондент; Системный аналитик; Художник-дизайнер; Технический писатель | 7h |  | 61 | 61 |  |
| 48 | 11.20 | Совещание 20 | 1h | 2021-07-14 08:00 | 2021-07-14 09:00 |  |  | 2021-07-14 08:00 | 2021-07-14 09:00 | 1h | 18.14d | start no earlier than 2021-07-14 08:00 | 3D аниматор; Web-дизайнер; Ведущий программист; Мультимедиа-корреспондент; Системный аналитик; Художник-дизайнер; Технический писатель | 7h |  | 61 | 61 |  |
| 49 | 11.21 | Совещание 21 | 1h | 2021-07-21 08:00 | 2021-07-21 09:00 |  |  | 2021-07-21 08:00 | 2021-07-21 09:00 | 1h | 13.14d | start no earlier than 2021-07-21 08:00 | 3D аниматор; Web-дизайнер; Ведущий программист; Мультимедиа-корреспондент; Системный аналитик; Художник-дизайнер; Технический писатель | 7h |  | 61 | 61 |  |
| 50 | 11.22 | Совещание 22 | 1h | 2021-07-28 08:00 | 2021-07-28 09:00 |  |  | 2021-07-28 08:00 | 2021-07-28 09:00 | 1h | 8.14d | start no earlier than 2021-07-28 08:00 | 3D аниматор; Web-дизайнер; Ведущий программист; Мультимедиа-корреспондент; Системный аналитик; Художник-дизайнер; Технический писатель | 7h |  | 61 | 61 |  |
| 51 | 11.23 | Совещание 23 | 1h | 2021-08-04 08:00 | 2021-08-04 09:00 |  |  |  |  |  | 3.14d | start no earlier than 2021-08-04 08:00 |  |  |  |  |  |  |
